# スポーツ用品ネット販売システム構築プロジェクト

Schedule from MS Project, 2015-04-01 to 2016-04-25, status date 2009-07-24, costs in ¥, A marks actual dates.
繹ｱABC遉ｾ
プロジェクト・スポンサー ： XYZ株式会社 スポーツ用品事業部 事業部長 吉沢 正文 / プロジェクト・マネジャー ： 株式会社ABC社 システム開発本部 開発一部 荒井 禎司 / プロジェクトの成果物 ： スポーツ用品ネット販売システム / プロジェクト発足の理由 ： 現在の電話、FAXで受けた受注情報をオフコンにて入力している販売システムをインターネット化して販売業務の効率化、迅速化、正確な対応、販売コストの低減、売れ筋商品早期把握、在庫の適正化を図り、ビジネス拡大に貢献するため。 / プロジェクトの期日 ： 2007年3月31日 / プロジェクトの予算 ： 240,000,000円
ｷプロジェクト・スポンサー ： XYZ株式会社 スポーツ用品事業部 事業部長 吉沢 正文 / ｷプロジェクト・マネジャー ： 株式会社ABC社 システム開発本部 開発一部 荒井 禎司 / ｷプロジェクトの成果物 ： スポーツ用品ネット販売システム / ｷプロジェクト発足の理由 ： 現在の電話、FAXで受けた受注情報をオフコンにて入力している販売システムをインターネット化して販売業務の効率化、迅速化、正確な対応、販売コストの低減、売れ筋商品早期把握、在庫の適正化を図り、ビジネス拡大に貢献するため。 / ｷプロジェクトの期日 ： 2007年3月31日 / ｷプロジェクトの予算 ： 240,000,000円

## Calendars

- ㈱ABC社: Mon-Fri 09:00-12:00, 13:00-18:00; Sat-Sun off. Exceptions (off unless hours are given): 2015-04-29, 2015-05-04 to 2015-05-05, 2015-07-20, 2015-09-15, 2015-09-23, 2015-10-12, 2015-11-03, 2015-11-23, 2015-12-23, 2016-01-01, 2016-01-11, 2016-02-11, 2016-03-21.

## Resources

| Resource | Group | Rate |
| --- | --- | --- |
| 吉田正雄 | XYZ㈱ | 15000 |
| 荒川純一 | ㈱ABC社 | 15000 |
| 高木正和 | ㈱ABC社 | 10000 |
| 長瀬治夫 | ㈱ABC社 | 10000 |
| 岡崎聡子 | ㈱ABC社 | 10000 |
| 中島隆志 | ㈱ABC社 | 15000 |
| 工藤伸明 | ㈱ABC社 | 10000 |
| 矢島謙一 | ㈱ABC社 | 10000 |
| 田崎浩二 | ㈱ABC社 | 10000 |
| 根本庸子 | ㈱ABC社 | 10000 |
| 目黒完治 | ㈱ABC社 | 15000 |
| 中尾美恵子 | ㈱ABC社 | 10000 |
| 田中靖男 | システム開発㈱ | 8000 |
| 佐藤正巳 | システム開発㈱ | 6000 |
| 安田大樹 | システム開発㈱ | 6000 |
| 高見美幸 | システム開発㈱ | 6000 |
| 安西紀子 | システム開発㈱ | 6000 |
| 脇田博康 | システム開発㈱ | 6000 |
| 尼子幸保 | システム開発㈱ | 6000 |
| 本庄祐樹 | システム開発㈱ | 6000 |

## Schedule

| ID | WBS | Task | Type | Duration | Start | Finish | Predecessors | Complete | Remaining | Baseline start | Baseline finish | Baseline duration | Total slack | Resources | Work | Actual work | Cost | Baseline cost | Actual cost | 成果物 |
| --- | --- | --- | --- | --- | --- | --- | --- | --- | --- | --- | --- | --- | --- | --- | --- | --- | --- | --- | --- | --- |
| 1 | 1 | **要件定義** |  | 54d | 2015-05-07 A | 2015-07-22 A |  | 100% |  | 2009-05-07 | 2009-06-16 | 29d |  |  | 874h | 874h | 9,640,000 | 6,030,000 | 9,640,000 |  |
| 2 | 1.1 | **顧客要求調査と分析** |  | 13d | 2015-05-07 A | 2015-05-25 A |  | 100% |  | 2009-05-07 | 2009-05-25 | 13d |  |  | 130h | 130h | 1,560,000 | 1,950,000 | 1,560,000 |  |
| 3 | 1.1.1 | 要求リスト（基本合意版）の作成 |  | 10d | 2015-05-07 A | 2015-05-20 A | 134 | 100% |  | 2009-05-07 | 2009-05-20 | 10d |  | 荒川純一 [25%]; 中島隆志 [25%]; 工藤伸明 [25%]; 高木正和 [25%]; 矢島謙一 [25%] | 100h | 100h | 1,200,000 | 1,500,000 | 1,200,000 | 要求リスト |
| 4 | 1.1.2 | 要求の調整 |  | 3d | 2015-05-21 A | 2015-05-25 A | 3 | 100% |  | 2009-05-21 | 2009-05-25 | 3d |  | 荒川純一 [25%]; 中島隆志 [25%]; 工藤伸明 [25%]; 高木正和 [25%]; 矢島謙一 [25%] | 30h | 30h | 360,000 | 450,000 | 360,000 | 要求リスト改定版 |
| 5 | 1.2 | **要件定義書** |  | 38d | 2015-05-26 A | 2015-07-16 A | 2 | 100% |  | 2009-05-26 | 2009-06-11 | 13d |  |  | 704h | 704h | 7,520,000 | 3,520,000 | 7,520,000 |  |
| 6 | 1.2.1 | 全体、共通機能の要件定義書の作成 |  | 5d | 2015-05-26 A | 2015-06-01 A |  | 100% |  | 2009-05-26 | 2009-06-01 | 5d |  | 中島隆志; 矢島謙一; 根本庸子 | 120h | 120h | 1,400,000 | 1,400,000 | 1,400,000 | 全体、共通機能の要件定義書 |
| 7 | 1.2.2 | 受注処理の要件定義書の作成 |  | 5d | 2015-06-02 A | 2015-06-08 A | 6 | 100% |  | 2009-06-02 | 2009-06-08 | 5d |  | 工藤伸明 [50%] | 20h | 20h | 200,000 | 200,000 | 200,000 | 受注処理の要件定義書 |
| 8 | 1.2.3 | 発注処理の要件定義書の作成 |  | 5d | 2015-06-02 A | 2015-06-08 A | 6 | 100% |  | 2009-06-02 | 2009-06-08 | 5d |  | 工藤伸明 [50%] | 20h | 20h | 200,000 | 200,000 | 200,000 | 発注処理の要件定義書 |
| 9 | 1.2.4 | 入金顧客処理の要件定義書の作成 |  | 5d | 2015-06-02 A | 2015-06-08 A | 6 | 100% |  | 2009-06-02 | 2009-06-08 | 5d |  | 高木正和 | 40h | 40h | 400,000 | 400,000 | 400,000 | 入金顧客処理の要件定義書 |
| 10 | 1.2.5 | 要件定義書の改定 |  | 25d | 2015-06-09 A | 2015-07-13 A | 9 | 100% |  |  |  |  |  | 高木正和; 工藤伸明 | 400h | 400h | 4,000,000 |  | 4,000,000 | 要件定義書（改定版） |
| 11 | 1.2.6 | 要件定義書のレビュー |  | 1d | 2015-07-14 A | 2015-07-14 A | 8, 7, 10 | 100% |  | 2009-06-09 | 2009-06-09 | 1d |  | 吉田正雄; 荒川純一; 中島隆志; 工藤伸明; 高木正和; 矢島謙一; 根本庸子 | 56h | 56h | 680,000 | 680,000 | 680,000 | 内部レビュー済み要件定義書 |
| 12 | 1.2.7 | 要件定義書の品質レビュー |  | 1d | 2015-07-15 A | 2015-07-15 A | 11 | 100% |  | 2009-06-10 | 2009-06-10 | 1d |  | 目黒完治; 中尾美恵子 | 16h | 16h | 200,000 | 200,000 | 200,000 | 品質レビュー済み要件定義書 |
| 13 | 1.2.8 | 要件定義書の顧客最終レビューと承認 |  | 1d | 2015-07-16 A | 2015-07-16 A | 12 | 100% |  | 2009-06-11 | 2009-06-11 | 1d |  | 吉田正雄; 荒川純一; 中島隆志; 矢島謙一 | 32h | 32h | 440,000 | 440,000 | 440,000 | 最終承認済み要件定義書 |
| 14 | 1.3 | 調達（調整から契約） |  | 2d | 2015-07-17 A | 2015-07-21 A | 13 | 100% |  | 2009-06-12 | 2009-06-15 | 2d |  | 荒川純一 [50%]; 工藤伸明 [50%] | 16h | 16h | 200,000 | 200,000 | 200,000 | 調達契約書 |
| 15 | 1.4 | 外部設計以降の開発計画の詳細化 |  | 2d | 2015-07-17 A | 2015-07-21 A | 13 | 100% |  | 2009-06-12 | 2009-06-15 | 2d |  | 荒川純一 [50%]; 中島隆志 [50%] | 16h | 16h | 240,000 | 240,000 | 240,000 | プロジェクト・スケジュール（更新版） |
| 16 | 1.5 | プロジェクトマネジメント計画書の更新 |  | 1d | 2015-07-22 A | 2015-07-22 A | 15, 14 | 100% |  | 2009-06-16 | 2009-06-16 | 1d |  | 荒川純一 | 8h | 8h | 120,000 | 120,000 | 120,000 | プロジェクトマネジメント計画書（更新版） |
| 17 | 1.6 | 要件定義終了 | milestone | 0d | 2015-07-22 A | 2015-07-22 A | 16 | 100% |  | 2009-06-16 | 2009-06-16 | 0d |  |  |  |  |  |  |  |  |
| 18 | 2 | **外部設計** |  | 51d | 2015-06-17 A | 2015-08-27 | 1FS-25d | 58% | 21.22d | 2009-06-17 | 2009-08-11 | 39d | 0d |  | 2124h | 1312h | 18,480,000 | 12,920,000 | 10,808,000 |  |
| 19 | 2.1 | 新規業務フローの作成 |  | 7d | 2015-06-17 A | 2015-06-25 A |  | 100% |  | 2009-06-17 | 2009-06-25 | 7d |  | 中島隆志; 矢島謙一 | 112h | 112h | 1,400,000 | 1,400,000 | 1,400,000 | 業務フロー |
| 20 | 2.2 | **受注処理サブシステム** |  | 28d | 2015-06-26 A | 2015-08-05 |  | 69% | 8.62d | 2009-06-26 | 2009-07-17 | 16d | 0d |  | 504h | 360h | 3,260,000 | 2,020,000 | 2,304,000 |  |
| 21 | 2.2.1 | 設計書の作成 |  | 15d | 2015-06-26 A | 2015-07-16 A | 19 | 100% |  | 2009-06-26 | 2009-07-16 | 15d |  | 田中靖男 [50%]; 佐藤正巳; 安田大樹 | 300h | 300h | 1,920,000 | 1,920,000 | 1,920,000 | 受注処理サブシステム外部設計書 |
| 22 | 2.2.2 | 設計書の改定 |  | 10d | 2015-07-22 A | 2015-08-04 | 21, 15 | 30% | 7d |  |  |  | 0d | 佐藤正巳; 安田大樹; 田中靖男 [50%] | 200h | 60h | 1,280,000 |  | 384,000 | 受注処理サブシステム外部設計書（更新版） |
| 23 | 2.2.3 | 外部設計書のレビュー |  | 1d | 2015-08-05 | 2015-08-05 | 22 |  |  | 2009-07-17 | 2009-07-17 | 1d | 0d | 中島隆志 [50%] | 4h |  | 60,000 | 100,000 |  | 承認済み受注処理サブシステム外部設計書 |
| 24 | 2.3 | **発注処理サブシステム** |  | 28d | 2015-06-26 A | 2015-08-05 |  | 69% | 8.62d | 2009-06-26 | 2009-07-17 | 16d | 0d |  | 508h | 360h | 3,300,000 | 2,020,000 | 2,304,000 |  |
| 25 | 2.3.1 | 設計書の作成 |  | 15d | 2015-06-26 A | 2015-07-16 A | 19 | 100% |  | 2009-06-26 | 2009-07-16 | 15d |  | 田中靖男 [50%]; 安西紀子; 脇田博康 | 300h | 300h | 1,920,000 | 1,920,000 | 1,920,000 | 発注処理サブシステム外部設計書 |
| 26 | 2.3.2 | 設計書の改定 |  | 10d | 2015-07-22 A | 2015-08-04 | 25, 15 | 30% | 7d |  |  |  | 0d | 安西紀子; 脇田博康; 田中靖男 [50%] | 200h | 60h | 1,280,000 |  | 384,000 | 発注処理サブシステム外部設計書（改定版） |
| 27 | 2.3.3 | 外部設計書のレビュー |  | 1d | 2015-08-05 | 2015-08-05 | 26 |  |  | 2009-07-17 | 2009-07-17 | 1d | 0d | 中島隆志 [50%]; 工藤伸明 [50%] | 8h |  | 100,000 | 100,000 |  | 承認済み発注処理サブシステム外部設計書 |

| ID | WBS | Task | Type | Duration | Start | Finish | Predecessors | Complete | Remaining | Baseline start | Baseline finish | Baseline duration | Total slack | Resources | Work | Actual work | Cost | Baseline cost | Actual cost | 成果物 |
| --- | --- | --- | --- | --- | --- | --- | --- | --- | --- | --- | --- | --- | --- | --- | --- | --- | --- | --- | --- | --- |
| 28 | 2.4 | **入金・顧客管理サブシステム** |  | 28d | 2015-06-26 A | 2015-08-05 |  | 69% | 8.75d | 2009-06-26 | 2009-07-15 | 14d | 16d |  | 728h | 480h | 7,320,000 | 4,280,000 | 4,800,000 |  |
| 29 | 2.4.1 | ユーザーインターフェイスの作成 |  | 13d | 2015-06-26 A | 2015-07-14 A | 19 | 100% |  | 2009-06-26 | 2009-07-14 | 13d |  | 岡崎聡子; 田崎浩二 | 208h | 208h | 2,080,000 | 2,080,000 | 2,080,000 | 入金・顧客管理サブシステムユーザーインターフェイス |
| 30 | 2.4.2 | ユーザーインターフェイスの改定 |  | 10d | 2015-07-22 A | 2015-08-04 | 29, 15 | 30% | 7d |  |  |  | 17d | 岡崎聡子; 田崎浩二 | 160h | 48h | 1,600,000 |  | 480,000 | 入金・顧客管理サブシステムユーザーインターフェイス（改定版） |
| 31 | 2.4.3 | データベースの設計 |  | 10d | 2015-06-26 A | 2015-07-09 A | 19 | 100% |  | 2009-06-26 | 2009-07-09 | 10d |  | 長瀬治夫 | 80h | 80h | 800,000 | 800,000 | 800,000 | 入金・顧客管理サブシステムデータベース外部設計書 |
| 32 | 2.4.4 | データベース設計の改定 |  | 8d | 2015-07-22 A | 2015-07-31 | 31, 15 | 38% | 5d |  |  |  | 19d | 長瀬治夫 | 64h | 24h | 640,000 |  | 240,000 | 入金・顧客管理サブシステムデータベース外部設計書（改定版） |
| 33 | 2.4.5 | システム処理機能の設計 |  | 12d | 2015-06-26 A | 2015-07-13 A | 19 | 100% |  | 2009-06-26 | 2009-07-13 | 12d |  | 高木正和 | 96h | 96h | 960,000 | 960,000 | 960,000 | 入金・顧客管理サブシステムシステム処理機能外部設計書 |
| 34 | 2.4.6 | システム処理機能設計の改定 |  | 10d | 2015-07-22 A | 2015-08-04 | 33, 15 | 30% | 7d |  |  |  | 0d | 高木正和 | 80h | 24h | 800,000 |  | 240,000 | 入金・顧客管理サブシステムシステム処理機能外部設計書（改定版） |
| 35 | 2.4.7 | 外部設計書のレビュー |  | 1d | 2015-08-05 | 2015-08-05 | 29, 31, 34 |  |  | 2009-07-15 | 2009-07-15 | 1d | 0d | 中島隆志; 高木正和; 岡崎聡子; 田崎浩二; 長瀬治夫 | 40h |  | 440,000 | 440,000 |  | 承認済み入金・顧客管理サブシステム外部設計書 |
| 36 | 2.5 | 移行の設計 |  | 7d | 2015-08-06 | 2015-08-14 | 35, 23, 27 |  |  | 2009-07-21 | 2009-07-29 | 7d | 0d | 矢島謙一 | 56h |  | 560,000 | 560,000 |  | 移行設計書 |
| 37 | 2.6 | **共通機能** |  | 5d | 2015-08-17 | 2015-08-21 |  |  |  | 2009-07-30 | 2009-08-05 | 5d | 0d |  | 80h |  | 1,000,000 | 1,000,000 |  |  |
| 38 | 2.6.1 | 運用･障害対策の設計 |  | 5d | 2015-08-17 | 2015-08-21 | 36 |  |  | 2009-07-30 | 2009-08-05 | 5d | 0d | 中島隆志 [50%]; 根本庸子 [50%] | 40h |  | 500,000 | 500,000 |  | 運用・障害対策外部設計書 |
| 39 | 2.6.2 | セキュリティーの設計 |  | 5d | 2015-08-17 | 2015-08-21 | 36 |  |  | 2009-07-30 | 2009-08-05 | 5d | 0d | 中島隆志 [50%]; 根本庸子 [50%] | 40h |  | 500,000 | 500,000 |  | セキュリティー外部設計書 |
| 40 | 2.7 | システムプラットフォームの設計 |  | 5d | 2015-08-17 | 2015-08-21 | 36 |  |  | 2009-07-30 | 2009-08-05 | 5d | 0d | 矢島謙一 | 40h |  | 400,000 | 400,000 |  | システムプラットフォーム外部設計書 |
| 41 | 2.8 | 外部仕様書の社内公式レビュー |  | 1d | 2015-08-24 | 2015-08-24 | 38, 39, 40 |  |  | 2009-08-06 | 2009-08-06 | 1d | 0d | 中島隆志; 矢島謙一; 工藤伸明; 高木正和 | 32h |  | 360,000 | 360,000 |  | 社内承認済み承認済み外部仕様書 |
| 42 | 2.9 | 内部設計以降の開発計画の詳細化 |  | 1d | 2015-08-25 | 2015-08-25 | 41 |  |  | 2009-08-07 | 2009-08-07 | 1d | 0d | 荒川純一; 中島隆志 | 16h |  | 240,000 | 240,000 |  | プロジェクトマネジメント計画書（改定版） |
| 43 | 2.10 | 外部仕様書顧客最終レビューと承認 |  | 1d | 2015-08-26 | 2015-08-26 | 42 |  |  | 2009-08-10 | 2009-08-10 | 1d | 0d | 吉田正雄; 荒川純一; 中島隆志; 矢島謙一 | 32h |  | 440,000 | 440,000 |  | 承認済み外部仕様書 |
| 44 | 2.11 | 外部仕様書の品質レビュー |  | 1d | 2015-08-27 | 2015-08-27 | 43 |  |  | 2009-08-11 | 2009-08-11 | 1d | 0d | 目黒完治; 中尾美恵子 | 16h |  | 200,000 | 200,000 |  | 最終承認済み外部仕様書 |
| 45 | 2.12 | 外部設計終了 | milestone | 0d | 2015-08-27 | 2015-08-27 | 44 |  |  | 2009-08-11 | 2009-08-11 | 0d | 0d |  |  |  |  |  |  |  |
| 46 | 3 | **内部設計** |  | 46d | 2015-08-28 | 2015-11-05 | 18 |  |  | 2009-08-12 | 2009-10-19 | 46d | 0d |  | 1792h |  | 15,080,000 | 15,080,000 |  |  |
| 47 | 3.1 | 共通機能の設計 |  | 7d | 2015-08-28 | 2015-09-07 |  |  |  | 2009-08-12 | 2009-08-20 | 7d | 0d | 中島隆志; 根本庸子 | 112h |  | 1,400,000 | 1,400,000 |  | 共通機能内部設計書 |
| 48 | 3.2 | **受注処理サブシステム** |  | 14d | 2015-09-08 | 2015-09-29 |  |  |  | 2009-08-21 | 2009-09-09 | 14d | 3d |  | 448h |  | 2,912,000 | 2,912,000 |  |  |
| 49 | 3.2.1 | プログラムの設計 |  | 14d | 2015-09-08 | 2015-09-29 | 47 |  |  | 2009-08-21 | 2009-09-09 | 14d | 3d | 田中靖男; 佐藤正巳; 安田大樹; 高見美幸 | 448h |  | 2,912,000 | 2,912,000 |  | 受注処理サブシステムプログラム設計書 |
| 50 | 3.3 | **発注処理サブシステム** |  | 14d | 2015-09-08 | 2015-09-29 |  |  |  | 2009-08-21 | 2009-09-09 | 14d | 3d |  | 448h |  | 2,688,000 | 2,688,000 |  |  |
| 51 | 3.3.1 | プログラムの設計 |  | 14d | 2015-09-08 | 2015-09-29 | 47 |  |  | 2009-08-21 | 2009-09-09 | 14d | 3d | 安西紀子; 脇田博康; 尼子幸保; 本庄祐樹 | 448h |  | 2,688,000 | 2,688,000 |  | 発注処理サブシステムプログラム設計書 |

| ID | WBS | Task | Type | Duration | Start | Finish | Predecessors | Baseline start | Baseline finish | Baseline duration | Total slack | Free slack | Resources | Work | Cost | Baseline cost | 成果物 |
| --- | --- | --- | --- | --- | --- | --- | --- | --- | --- | --- | --- | --- | --- | --- | --- | --- | --- |
| 52 | 3.4 | **入金・顧客管理サブシステム** |  | 17d | 2015-09-08 | 2015-10-02 |  | 2009-08-21 | 2009-09-14 | 17d | 0d |  |  | 520h | 5,200,000 | 5,200,000 |  |
| 53 | 3.4.1 | ユーザーインターフェイスの設計 |  | 17d | 2015-09-08 | 2015-10-02 | 47 | 2009-08-21 | 2009-09-14 | 17d | 0d |  | 岡崎聡子; 田崎浩二 | 272h | 2,720,000 | 2,720,000 | 入金・顧客管理サブシステムユーザインターフェイス内部設計書 |
| 54 | 3.4.2 | データベースの設計 |  | 16d | 2015-09-08 | 2015-10-01 | 47 | 2009-08-21 | 2009-09-11 | 16d | 1d |  | 長瀬治夫 | 128h | 1,280,000 | 1,280,000 | 入金・顧客管理サブシステムデータベース内部設計書 |
| 55 | 3.4.3 | システム処理機能の設計 |  | 15d | 2015-09-08 | 2015-09-30 | 47 | 2009-08-21 | 2009-09-10 | 15d | 2d |  | 高木正和 | 120h | 1,200,000 | 1,200,000 | 入金・顧客管理サブシステム処理機能設計書 |
| 56 | 3.5 | システム性能／容量の検証 |  | 1d | 2015-10-05 | 2015-10-05 | 49, 51, 53, 54, 55 | 2009-09-16 | 2009-09-16 | 1d | 0d |  | 中島隆志; 矢島謙一 | 16h | 200,000 | 200,000 | システム性能/要領の検証結果 |
| 57 | 3.6 | 全体テスト計画の策定 |  | 1d | 2015-10-06 | 2015-10-06 | 56 | 2009-09-17 | 2009-09-17 | 1d | 0d |  | 荒川純一; 中島隆志; 矢島謙一 | 24h | 320,000 | 320,000 | 全体テスト計画 |
| 58 | 3.7 | 開発環境／テスト環境の構築 |  | 17d | 2015-10-07 | 2015-10-30 | 57 | 2009-09-18 | 2009-10-14 | 17d | 0d |  | 矢島謙一 | 136h | 1,360,000 | 1,360,000 | 開発環境/テスト環境 |
| 59 | 3.8 | 開発実施計画の詳細化 |  | 1d | 2015-11-02 | 2015-11-02 | 58 | 2009-10-15 | 2009-10-15 | 1d | 0d |  | 荒川純一; 中島隆志 | 16h | 240,000 | 240,000 | 開発実績計画 |
| 60 | 3.9 | 内部仕様書の社内レビュー |  | 1d | 2015-11-04 | 2015-11-04 | 59 | 2009-10-16 | 2009-10-16 | 1d | 0d |  | 中島隆志; 矢島謙一; 工藤伸明; 高木正和; 岡崎聡子; 田崎浩二; 長瀬治夫; 根本庸子 | 64h | 680,000 | 680,000 | 内部レビュー済み内部仕様書 |
| 61 | 3.10 | 内部仕様書の品質レビュー |  | 1d | 2015-11-05 | 2015-11-05 | 60 | 2009-10-19 | 2009-10-19 | 1d | 0d |  | 中尾美恵子 | 8h | 80,000 | 80,000 | 最終承認済み内部仕様書 |
| 62 | 3.11 | 内部設計終了 | milestone | 0d | 2015-11-05 | 2015-11-05 | 61 | 2009-10-19 | 2009-10-19 | 0d | 0d |  |  |  |  |  |  |
| 63 | 4 | **コード/単体テスト/サブシステム内結合テスト** |  | 50d | 2015-11-06 | 2016-01-20 | 46 | 2009-10-20 | 2009-12-31 | 50d | 0d |  |  | 4472h | 33,480,000 | 33,480,000 |  |
| 64 | 4.1 | **受注処理サブシステム** |  | 48d | 2015-11-06 | 2016-01-18 |  | 2009-10-20 | 2009-12-29 | 48d | 0d |  |  | 1512h | 9,856,000 | 9,856,000 |  |
| 65 | 4.1.1 | プログラムの作成と単体テストの実施 |  | 35d | 2015-11-06 | 2015-12-28 |  | 2009-10-20 | 2009-12-09 | 35d | 0d |  | 田中靖男; 佐藤正巳; 安田大樹; 高見美幸 | 1120h | 7,280,000 | 7,280,000 | 受注処理サブシステムプログラム |
| 66 | 4.1.2 | テスト仕様書の作成 |  | 8d | 2015-12-29 | 2016-01-08 | 65 | 2009-12-10 | 2009-12-21 | 8d | 0d |  | 田中靖男; 佐藤正巳; 安田大樹; 高見美幸 | 256h | 1,664,000 | 1,664,000 | 受注処理サブシステムテスト仕様書 |
| 67 | 4.1.3 | サブシステム内の結合テストの実施 |  | 4d | 2016-01-12 | 2016-01-15 | 66 | 2009-12-22 | 2009-12-28 | 4d | 0d |  | 田中靖男; 佐藤正巳; 安田大樹; 高見美幸 | 128h | 832,000 | 832,000 | 受注処理サブシステム結合テスト結果 |
| 68 | 4.1.4 | 結合テストの前検収 |  | 1d | 2016-01-18 | 2016-01-18 | 67 | 2009-12-29 | 2009-12-29 | 1d | 0d |  | 工藤伸明 | 8h | 80,000 | 80,000 | 検収済み受注処理サブシステム |
| 69 | 4.2 | **発注処理サブシステム** |  | 48d | 2015-11-06 | 2016-01-18 |  | 2009-10-20 | 2009-12-29 | 48d | 0d |  |  | 1512h | 9,104,000 | 9,104,000 |  |
| 70 | 4.2.1 | プログラムの作成と単体テストの実施 |  | 35d | 2015-11-06 | 2015-12-28 |  | 2009-10-20 | 2009-12-09 | 35d | 0d |  | 安西紀子; 脇田博康; 尼子幸保; 本庄祐樹 | 1120h | 6,720,000 | 6,720,000 | 発注処理サブシステムプログラム |
| 71 | 4.2.2 | テスト仕様書の作成 |  | 8d | 2015-12-29 | 2016-01-08 | 70 | 2009-12-10 | 2009-12-21 | 8d | 0d |  | 安西紀子; 脇田博康; 尼子幸保; 本庄祐樹 | 256h | 1,536,000 | 1,536,000 | 発注処理サブシステムテスト仕様書 |
| 72 | 4.2.3 | サブシステム内の結合テストの実施 |  | 4d | 2016-01-12 | 2016-01-15 | 71 | 2009-12-22 | 2009-12-28 | 4d | 0d |  | 安西紀子; 脇田博康; 尼子幸保; 本庄祐樹 | 128h | 768,000 | 768,000 | 発注処理サブシステム結合テスト結果 |
| 73 | 4.2.4 | 結合テストの前検収 |  | 1d | 2016-01-18 | 2016-01-18 | 72 | 2009-12-29 | 2009-12-29 | 1d | 0d |  | 工藤伸明 | 8h | 80,000 | 80,000 | 検収済み発注処理サブシステム |
| 74 | 4.3 | **入金・顧客管理サブシステム** |  | 43d | 2015-11-06 | 2016-01-08 |  | 2009-10-20 | 2009-12-21 | 43d | 5d |  |  | 1376h | 13,760,000 | 13,760,000 |  |
| 75 | 4.3.1 | プログラムの作成と単体テストの実施 |  | 30d | 2015-11-06 | 2015-12-18 |  | 2009-10-20 | 2009-12-02 | 30d | 5d | 0d | 高木正和; 岡崎聡子; 田崎浩二; 長瀬治夫 | 960h | 9,600,000 | 9,600,000 | 入金・顧客管理サブシステムプログラム |
| 76 | 4.3.2 | テスト仕様書の作成 |  | 8d | 2015-12-21 | 2015-12-31 | 75 | 2009-12-03 | 2009-12-14 | 8d | 5d | 0d | 高木正和; 岡崎聡子; 田崎浩二; 長瀬治夫 | 256h | 2,560,000 | 2,560,000 | 入金・顧客管理サブシステムテスト仕様書 |
| 77 | 4.3.3 | サブシステム内の結合テストの実施 |  | 5d | 2016-01-04 | 2016-01-08 | 76 | 2009-12-15 | 2009-12-21 | 5d | 5d |  | 高木正和; 岡崎聡子; 田崎浩二; 長瀬治夫 | 160h | 1,600,000 | 1,600,000 | 入金・顧客管理サブシステム結合テスト結果 |
| 78 | 4.4 | 結合テスト仕様書の社内レビュー |  | 1d | 2016-01-19 | 2016-01-19 | 68, 73, 77 | 2009-12-30 | 2009-12-30 | 1d | 0d |  | 中島隆志; 矢島謙一; 工藤伸明; 高木正和; 岡崎聡子; 田崎浩二; 長瀬治夫; 根本庸子 | 64h | 680,000 | 680,000 | 内部レビュー済み結合テスト仕様書 |
| 79 | 4.5 | プログラム/単体テスト/サブシステム内結合テストの品質レビュー |  | 1d | 2016-01-20 | 2016-01-20 | 78 | 2009-12-31 | 2009-12-31 | 1d | 0d |  | 中尾美恵子 | 8h | 80,000 | 80,000 | 最終承認済みプログラム/単体テスト/サブシステムない結合テスト結果 |

| ID | WBS | Task | Type | Duration | Start | Finish | Predecessors | Complete | Remaining | Baseline start | Baseline finish | Baseline duration | Total slack | Resources | Work | Actual work | Cost | Baseline cost | Actual cost | 成果物 |
| --- | --- | --- | --- | --- | --- | --- | --- | --- | --- | --- | --- | --- | --- | --- | --- | --- | --- | --- | --- | --- |
| 80 | 5 | **結合テスト** |  | 25d | 2016-01-21 | 2016-02-25 | 63 |  |  | 2010-01-04 | 2010-02-08 | 25d | 0d |  | 1040h |  | 10,040,000 | 10,040,000 |  |  |
| 81 | 5.1 | サブシステム間インターフェイスの接続テスト |  | 9d | 2016-01-21 | 2016-02-02 |  |  |  | 2010-01-04 | 2010-01-15 | 9d | 0d | 矢島謙一; 工藤伸明; 高木正和; 岡崎聡子; 田崎浩二; 長瀬治夫; 佐藤正巳; 安田大樹; 安西紀子; 脇田博康 | 720h |  | 6,048,000 | 6,048,000 |  | サブシステム間インターフェイス接続テスト結果 |
| 82 | 5.2 | カットオーバー基準の作成 |  | 2d | 2016-02-03 | 2016-02-04 | 81 |  |  | 2010-01-18 | 2010-01-19 | 2d | 0d | 荒川純一; 中島隆志 | 32h |  | 480,000 | 480,000 |  | カットオーバー基準 |
| 83 | 5.3 | 運用マニュアルの作成 |  | 12d | 2016-02-05 | 2016-02-23 | 82 |  |  | 2010-01-20 | 2010-02-04 | 12d | 0d | 中島隆志 [50%]; 矢島謙一 [50%] | 96h |  | 1,200,000 | 1,200,000 |  | 運用マニュアル |
| 84 | 5.4 | システムテスト計画の作成 |  | 10d | 2016-02-05 | 2016-02-19 | 82 |  |  | 2010-01-20 | 2010-02-02 | 10d | 2d | 荒川純一 [50%]; 中島隆志 [50%] | 80h |  | 1,200,000 | 1,200,000 |  | システムテスト計画 |
| 85 | 5.5 | 結合テストの結果レビュー |  | 1d | 2016-02-24 | 2016-02-24 | 83, 84 |  |  | 2010-02-05 | 2010-02-05 | 1d | 0d | 荒川純一; 中島隆志; 矢島謙一; 工藤伸明; 高木正和; 岡崎聡子; 田崎浩二; 長瀬治夫; 佐藤正巳; 安田大樹; 安西紀子; 脇田博康 | 96h |  | 912,000 | 912,000 |  | 内部レビュー済み結合テスト結果 |
| 86 | 5.6 | 結合テストの品質レビュー |  | 1d | 2016-02-25 | 2016-02-25 | 85 |  |  | 2010-02-08 | 2010-02-08 | 1d | 0d | 目黒完治; 中尾美恵子 | 16h |  | 200,000 | 200,000 |  | 最終結合テスト結果 |
| 87 | 6 | **システムテスト** |  | 31d | 2016-02-26 | 2016-04-11 | 80 |  |  | 2010-02-09 | 2010-03-25 | 31d | 0d |  | 1006h |  | 10,330,000 | 10,330,000 |  |  |
| 88 | 6.1 | サイクルテストの実施 |  | 7d | 2016-02-26 | 2016-03-07 |  |  |  | 2010-02-09 | 2010-02-18 | 7d | 12d | 矢島謙一 [25%]; 工藤伸明 [25%]; 高木正和 [25%]; 岡崎聡子 [25%]; 田崎浩二 [25%]; 長瀬治夫 [25%]; 田中靖男 [25%]; 佐藤正巳 [25%]; 安田大樹 [25%]; 安西紀子 [25%]; 脇田博康 [25%] | 154h |  | 1,288,000 | 1,288,000 |  | サイクルテスト結果 |
| 89 | 6.2 | 障害＆回復テストの実施 |  | 7d | 2016-02-26 | 2016-03-07 |  |  |  | 2010-02-09 | 2010-02-18 | 7d | 12d | 矢島謙一 [25%]; 工藤伸明 [25%]; 高木正和 [25%]; 岡崎聡子 [25%]; 田崎浩二 [25%]; 長瀬治夫 [25%]; 田中靖男 [25%]; 佐藤正巳 [25%]; 安田大樹 [25%]; 安西紀子 [25%]; 脇田博康 [25%] | 154h |  | 1,288,000 | 1,288,000 |  | 障害＆回復テスト結果 |
| 90 | 6.3 | セキュリティーテストの実施 |  | 8d | 2016-02-26 | 2016-03-08 |  |  |  | 2010-02-09 | 2010-02-19 | 8d | 11d | 矢島謙一 [25%]; 工藤伸明 [25%]; 高木正和 [25%]; 岡崎聡子 [25%]; 田崎浩二 [25%]; 長瀬治夫 [25%]; 佐藤正巳 [25%]; 安田大樹 [25%]; 安西紀子 [25%]; 脇田博康 [25%] | 160h |  | 1,344,000 | 1,344,000 |  | セキュリティーテスト結果 |
| 91 | 6.4 | 移行テストの実施 |  | 19d | 2016-02-26 | 2016-03-24 |  |  |  | 2010-02-09 | 2010-03-08 | 19d | 0d | 中島隆志 [25%]; 矢島謙一 [25%]; 工藤伸明 [25%]; 高木正和 [25%]; 岡崎聡子 [25%]; 田崎浩二 [25%]; 長瀬治夫 [25%] | 266h |  | 2,850,000 | 2,850,000 |  | 移行テスト結果 |
| 92 | 6.5 | 利用部門による機能の確認 |  | 9d | 2016-03-25 | 2016-04-06 | 88, 89, 90, 91 |  |  | 2010-03-09 | 2010-03-19 | 9d | 0d | 荒川純一 [50%]; 中島隆志 [50%]; 矢島謙一 [50%] | 108h |  | 1,440,000 | 1,440,000 |  | 利用部門による機能の確認結果 |
| 93 | 6.6 | 運用テストの実施 |  | 9d | 2016-03-25 | 2016-04-06 | 88, 89, 90, 91 |  |  | 2010-03-09 | 2010-03-19 | 9d | 0d | 荒川純一 [50%]; 中島隆志 [50%]; 矢島謙一 [50%] | 108h |  | 1,440,000 | 1,440,000 |  | 運用テスト結果 |
| 94 | 6.7 | 本番稼動の承認 |  | 1d | 2016-04-07 | 2016-04-07 | 92, 93 |  |  | 2010-03-23 | 2010-03-23 | 1d | 0d | 荒川純一 | 8h |  | 120,000 | 120,000 |  | 本番稼動の承認書 |
| 95 | 6.8 | システムテスト結果の顧客レビュー |  | 1d | 2016-04-08 | 2016-04-08 | 94 |  |  | 2010-03-24 | 2010-03-24 | 1d | 0d | 荒川純一; 矢島謙一; 工藤伸明; 高木正和 | 32h |  | 360,000 | 360,000 |  | 顧客承認済みシステムテスト結果 |
| 96 | 6.9 | システムテストの品質レビュー |  | 1d | 2016-04-11 | 2016-04-11 | 95 |  |  | 2010-03-25 | 2010-03-25 | 1d | 0d | 目黒完治; 中尾美恵子 | 16h |  | 200,000 | 200,000 |  | 最終システムテスト結果 |
| 97 | 7 | **本稼働** |  | 4d | 2016-04-12 | 2016-04-15 | 87 |  |  | 2010-03-31 | 2010-04-05 | 4d | 0d |  | 128h |  | 1,760,000 | 1,760,000 |  |  |
| 98 | 7.1 | 本稼働 | milestone | 1d | 2016-04-12 | 2016-04-12 |  |  |  | 2010-03-31 | 2010-03-31 | 1d | 0d | 中島隆志; 荒川純一; 吉田正雄; 矢島謙一 | 32h |  | 440,000 | 440,000 |  | 完成したシステム |
| 99 | 7.2 | 本稼働の監視 |  | 3d | 2016-04-13 | 2016-04-15 | 98 |  |  | 2010-04-01 | 2010-04-05 | 3d | 0d | 中島隆志; 荒川純一; 吉田正雄; 矢島謙一 | 96h |  | 1,320,000 | 1,320,000 |  | 稼働したシステム |
| 100 | 8 | **プロジェクトマネジメント** |  | 265d | 2015-04-01 A | 2016-04-25 |  | 43% | 152.13d | 2009-04-01 | 2010-04-13 | 256d | 0d |  | 1096h | 420h | 13,400,000 | 13,520,000 | 5,460,000 |  |
| 101 | 8.1 | **立ち上げ** |  | 2d | 2015-04-01 A | 2015-04-02 A |  | 100% |  | 2009-04-01 | 2009-04-02 | 2d |  |  | 16h | 16h | 240,000 | 240,000 | 240,000 |  |
| 102 | 8.1.1 | プロジェクト憲章の発行 |  | 1d | 2015-04-01 A | 2015-04-01 A |  | 100% |  | 2009-04-01 | 2009-04-01 | 1d |  | 吉田正雄 | 8h | 8h | 120,000 | 120,000 | 120,000 | プロジェクト憲章 |
| 103 | 8.1.2 | ステークホルダーの特定 |  | 1d | 2015-04-02 A | 2015-04-02 A | 102 | 100% |  | 2009-04-02 | 2009-04-02 | 1d |  | 荒川純一 | 8h | 8h | 120,000 | 120,000 | 120,000 | ステークホルダー登録簿 |

| ID | WBS | Task | Duration | Start | Finish | Predecessors | Complete | Remaining | Baseline start | Baseline finish | Baseline duration | Total slack | Free slack | Resources | Work | Actual work | Cost | Baseline cost | Actual cost | 成果物 |
| --- | --- | --- | --- | --- | --- | --- | --- | --- | --- | --- | --- | --- | --- | --- | --- | --- | --- | --- | --- | --- |
| 104 | 8.2 | **計画** | 21d | 2015-04-03 A | 2015-05-06 | 101 | 95% | 1d | 2009-04-03 | 2009-05-06 | 21d | 242d |  |  | 168h | 160h | 2,520,000 | 2,520,000 | 2,400,000 |  |
| 105 | 8.2.1 | **プロジェクトマネジメント計画書** | 1d | 2015-04-03 A | 2015-04-03 A |  | 100% |  | 2009-04-03 | 2009-04-03 | 1d |  |  |  | 8h | 8h | 120,000 | 120,000 | 120,000 |  |
| 106 | 8.2.1.1 | プロジェクトマネジメント計画書の作成 | 1d | 2015-04-03 A | 2015-04-03 A |  | 100% |  | 2009-04-03 | 2009-04-03 | 1d |  |  | 荒川純一 | 8h | 8h | 120,000 | 120,000 | 120,000 | プロジェクトマネジメント計画書 |
| 107 | 8.2.2 | **補助の計画書** | 10d | 2015-04-06 A | 2015-04-17 | 105 | 90% | 1d | 2009-04-06 | 2009-04-17 | 10d | 252d |  |  | 80h | 72h | 1,200,000 | 1,200,000 | 1,080,000 |  |
| 108 | 8.2.2.1 | スコープ・マネジメント計画書の作成 | 1d | 2015-04-06 A | 2015-04-06 A |  | 100% |  | 2009-04-06 | 2009-04-06 | 1d |  |  | 荒川純一 | 8h | 8h | 120,000 | 120,000 | 120,000 | スコープ・マネジメント計画書 |
| 109 | 8.2.2.2 | 要求事項マネジメント計画書の作成 | 1d | 2015-04-07 A | 2015-04-07 A | 108 | 100% |  | 2009-04-07 | 2009-04-07 | 1d |  |  | 荒川純一 | 8h | 8h | 120,000 | 120,000 | 120,000 | 要求事項・マネジメント計画書 |
| 110 | 8.2.2.3 | スケジュール・マネジメント計画書の作成 | 1d | 2015-04-08 A | 2015-04-08 A | 109 | 100% |  | 2009-04-08 | 2009-04-08 | 1d |  |  | 荒川純一 | 8h | 8h | 120,000 | 120,000 | 120,000 | スケジュール・マネジメント計画書 |
| 111 | 8.2.2.4 | コスト・マネジメント計画書の作成 | 1d | 2015-04-09 A | 2015-04-09 A | 110 | 100% |  | 2009-04-09 | 2009-04-09 | 1d |  |  | 荒川純一 | 8h | 8h | 120,000 | 120,000 | 120,000 | コスト・マネジメント計画書 |
| 112 | 8.2.2.5 | 品質マネジメント計画書の作成 | 1d | 2015-04-10 A | 2015-04-10 A | 111 | 100% |  | 2009-04-10 | 2009-04-10 | 1d |  |  | 荒川純一 | 8h | 8h | 120,000 | 120,000 | 120,000 | 品質マネジメント計画書 |
| 113 | 8.2.2.6 | プロセス改善計画書の作成 | 1d | 2015-04-13 A | 2015-04-13 A | 112 | 100% |  | 2009-04-13 | 2009-04-13 | 1d |  |  | 荒川純一 | 8h | 8h | 120,000 | 120,000 | 120,000 | プロセス改善計画書 |
| 114 | 8.2.2.7 | 人的資源計画書の作成 | 1d | 2015-04-14 A | 2015-04-14 A | 113 | 100% |  | 2009-04-14 | 2009-04-14 | 1d |  |  | 荒川純一 | 8h | 8h | 120,000 | 120,000 | 120,000 | 人的資源計画書 |
| 115 | 8.2.2.8 | コミュニケーション・マネジメント計画書の作成 | 1d | 2015-04-15 A | 2015-04-15 A | 114 | 100% |  | 2009-04-15 | 2009-04-15 | 1d |  |  | 荒川純一 | 8h | 8h | 120,000 | 120,000 | 120,000 | コミュニケーション・マネジメント計画書 |
| 116 | 8.2.2.9 | リスク・マネジメント計画書の作成 | 1d | 2015-04-16 A | 2015-04-16 A | 115 | 100% |  | 2009-04-16 | 2009-04-16 | 1d |  |  | 荒川純一 | 8h | 8h | 120,000 | 120,000 | 120,000 | リスク・マネジメント計画書 |
| 117 | 8.2.2.10 | 調達マネジメント計画書の作成 | 0.5d | 2015-04-17 A | 2015-04-17 | 116 |  | 0.5d | 2009-04-17 | 2009-04-17 | 1d | 252d | 0d | 荒川純一 | 4h |  | 60,000 | 120,000 |  | 調達マネジメント計画書 |
| 118 | 8.2.2.11 | ステークホルダーマネジメント計画書の作成 | 0.5d | 2015-04-17 | 2015-04-17 | 117 |  |  |  |  |  | 252d |  | 荒川純一 | 4h |  | 60,000 |  |  |  |
| 119 | 8.2.3 | **ベースライン** | 5d | 2015-04-20 A | 2015-04-24 A | 107 | 100% |  | 2009-04-20 | 2009-04-24 | 5d |  |  |  | 40h | 40h | 600,000 | 600,000 | 600,000 |  |
| 120 | 8.2.3.1 | **スコープ・ベースライン** | 2d | 2015-04-20 A | 2015-04-21 A |  | 100% |  | 2009-04-20 | 2009-04-21 | 2d |  |  |  | 16h | 16h | 240,000 | 240,000 | 240,000 |  |
| 121 | 8.2.3.1.1 | プロジェクト・スコープ記述書の作成 | 1d | 2015-04-20 A | 2015-04-20 A |  | 100% |  | 2009-04-20 | 2009-04-20 | 1d |  |  | 荒川純一 | 8h | 8h | 120,000 | 120,000 | 120,000 | プロジェクト・スコープ記述書 |
| 122 | 8.2.3.1.2 | WBS、WBS辞書の作成 | 1d | 2015-04-21 A | 2015-04-21 A | 121 | 100% |  | 2009-04-21 | 2009-04-21 | 1d |  |  | 荒川純一 | 8h | 8h | 120,000 | 120,000 | 120,000 | WBS、WBS辞書 |
| 123 | 8.2.3.2 | **スケジュール・べースラン** | 1d | 2015-04-22 A | 2015-04-22 A | 120 | 100% |  | 2009-04-22 | 2009-04-22 | 1d |  |  |  | 8h | 8h | 120,000 | 120,000 | 120,000 |  |
| 124 | 8.2.3.2.1 | プロジェクト・スケジュールの作成 | 1d | 2015-04-22 A | 2015-04-22 A |  | 100% |  | 2009-04-22 | 2009-04-22 | 1d |  |  | 荒川純一 | 8h | 8h | 120,000 | 120,000 | 120,000 | プロジェクト・スケジュール |
| 125 | 8.2.3.3 | **コスト・パフォーマンス・ベースライン** | 2d | 2015-04-23 A | 2015-04-24 A | 123 | 100% |  | 2009-04-23 | 2009-04-24 | 2d |  |  |  | 16h | 16h | 240,000 | 240,000 | 240,000 |  |
| 126 | 8.2.3.3.1 | コストの見積り | 1d | 2015-04-23 A | 2015-04-23 A |  | 100% |  | 2009-04-23 | 2009-04-23 | 1d |  |  | 荒川純一 | 8h | 8h | 120,000 | 120,000 | 120,000 | 見積もったコスト |
| 127 | 8.2.3.3.2 | コスト・パフォーマンス・ベースラインの設定 | 1d | 2015-04-24 A | 2015-04-24 A | 126 | 100% |  | 2009-04-24 | 2009-04-24 | 1d |  |  | 荒川純一 | 8h | 8h | 120,000 | 120,000 | 120,000 | コスト・パフォーマンス・ベースライン |

| ID | WBS | Task | Type | Duration | Start | Finish | Predecessors | Complete | Remaining | Baseline start | Baseline finish | Baseline duration | Total slack | Constraint | Resources | Work | Actual work | Cost | Baseline cost | Actual cost | 成果物 |
| --- | --- | --- | --- | --- | --- | --- | --- | --- | --- | --- | --- | --- | --- | --- | --- | --- | --- | --- | --- | --- | --- |
| 128 | 8.2.4 | **プロジェクト文書** |  | 4d | 2015-04-27 A | 2015-05-01 A | 119 | 100% |  | 2009-04-27 | 2009-05-01 | 4d |  |  |  | 32h | 32h | 480,000 | 480,000 | 480,000 |  |
| 129 | 8.2.4.1 | 過去の教訓の抽出 |  | 1d | 2015-04-27 A | 2015-04-27 A |  | 100% |  | 2009-04-27 | 2009-04-27 | 1d |  |  | 荒川純一 | 8h | 8h | 120,000 | 120,000 | 120,000 | 過去の教訓 |
| 130 | 8.2.4.2 | プロジェクト・チームの編成 |  | 1d | 2015-04-28 A | 2015-04-28 A | 129 | 100% |  | 2009-04-28 | 2009-04-28 | 1d |  |  | 荒川純一 | 8h | 8h | 120,000 | 120,000 | 120,000 | プロジェクト・チーム |
| 131 | 8.2.4.3 | 役割と責任の明確化 |  | 1d | 2015-04-30 A | 2015-04-30 A | 130 | 100% |  | 2009-04-30 | 2009-04-30 | 1d |  |  | 荒川純一 | 8h | 8h | 120,000 | 120,000 | 120,000 | RAM表 |
| 132 | 8.2.4.4 | リスク登録簿の作成 |  | 1d | 2015-05-01 A | 2015-05-01 A | 131 | 100% |  | 2009-05-01 | 2009-05-01 | 1d |  |  | 荒川純一 | 8h | 8h | 120,000 | 120,000 | 120,000 | リスク登録簿 |
| 133 | 8.2.5 | プロジェクトマネジメント計画書及びプロジェクト文書の承認 |  | 1d | 2015-05-06 A | 2015-05-06 A | 132 | 100% |  | 2009-05-06 | 2009-05-06 | 1d |  |  | 吉田正雄 | 8h | 8h | 120,000 | 120,000 | 120,000 | 承認されたプロジェクトマネジメント計画書及びプロジェクト文書 |
| 134 | 8.2.6 | プロジェクト計画の完了 | milestone | 0d | 2015-05-06 A | 2015-05-06 A | 133 | 100% |  | 2009-05-06 | 2009-05-06 | 0d |  |  |  |  |  |  |  |  |  |
| 135 | 8.3 | **監視コントロール** |  | 246d | 2015-04-01 A | 2016-03-29 |  | 32% | 168.32d | 2009-04-01 | 2010-03-29 | 245d | 19d |  |  | 788h | 244h | 9,100,000 | 9,100,000 | 2,820,000 |  |
| 136 | 8.3.1 | **状況レビュー会議** |  | 243d | 2015-04-06 A | 2016-03-29 |  | 31% | 168.23d | 2009-04-06 | 2010-03-29 | 242d | 19d |  |  | 728h | 224h | 8,320,000 | 8,320,000 | 2,560,000 | 議事録 |
| 137 | 8.3.1.1 | 状況レビュー会議 1 |  | 1d | 2015-04-06 A | 2015-04-06 A |  | 100% |  | 2009-04-06 | 2009-04-06 | 1d |  | start no earlier than 2009-04-06 | 荒川純一 [25%]; 岡崎聡子 [25%]; 工藤伸明 [25%]; 根本庸子 [25%]; 高木正和 [25%]; 田崎浩二 [25%]; 中島隆志 [25%] | 14h | 14h | 160,000 | 160,000 | 160,000 |  |
| 138 | 8.3.1.2 | 状況レビュー会議 2 |  | 1d | 2015-04-13 A | 2015-04-13 A |  | 100% |  | 2009-04-13 | 2009-04-13 | 1d |  | start no earlier than 2009-04-13 | 荒川純一 [25%]; 岡崎聡子 [25%]; 工藤伸明 [25%]; 根本庸子 [25%]; 高木正和 [25%]; 田崎浩二 [25%]; 中島隆志 [25%] | 14h | 14h | 160,000 | 160,000 | 160,000 |  |
| 139 | 8.3.1.3 | 状況レビュー会議 3 |  | 1d | 2015-04-20 A | 2015-04-20 A |  | 100% |  | 2009-04-20 | 2009-04-20 | 1d |  | start no earlier than 2009-04-20 | 荒川純一 [25%]; 岡崎聡子 [25%]; 工藤伸明 [25%]; 根本庸子 [25%]; 高木正和 [25%]; 田崎浩二 [25%]; 中島隆志 [25%] | 14h | 14h | 160,000 | 160,000 | 160,000 |  |
| 140 | 8.3.1.4 | 状況レビュー会議 4 |  | 1d | 2015-04-27 A | 2015-04-27 A |  | 100% |  | 2009-04-27 | 2009-04-27 | 1d |  | start no earlier than 2009-04-27 | 荒川純一 [25%]; 岡崎聡子 [25%]; 工藤伸明 [25%]; 根本庸子 [25%]; 高木正和 [25%]; 田崎浩二 [25%]; 中島隆志 [25%] | 14h | 14h | 160,000 | 160,000 | 160,000 |  |
| 141 | 8.3.1.5 | 状況レビュー会議 5 |  | 1d | 2015-05-06 A | 2015-05-06 A |  | 100% |  | 2009-05-06 | 2009-05-06 | 1d |  | start no earlier than 2009-05-04 | 荒川純一 [25%]; 岡崎聡子 [25%]; 工藤伸明 [25%]; 根本庸子 [25%]; 高木正和 [25%]; 田崎浩二 [25%]; 中島隆志 [25%] | 14h | 14h | 160,000 | 160,000 | 160,000 |  |
| 142 | 8.3.1.6 | 状況レビュー会議 6 |  | 1d | 2015-05-11 A | 2015-05-11 A |  | 100% |  | 2009-05-11 | 2009-05-11 | 1d |  | start no earlier than 2009-05-11 | 荒川純一 [25%]; 岡崎聡子 [25%]; 工藤伸明 [25%]; 根本庸子 [25%]; 高木正和 [25%]; 田崎浩二 [25%]; 中島隆志 [25%] | 14h | 14h | 160,000 | 160,000 | 160,000 |  |
| 143 | 8.3.1.7 | 状況レビュー会議 7 |  | 1d | 2015-05-18 A | 2015-05-18 A |  | 100% |  | 2009-05-18 | 2009-05-18 | 1d |  | start no earlier than 2009-05-18 | 荒川純一 [25%]; 岡崎聡子 [25%]; 工藤伸明 [25%]; 根本庸子 [25%]; 高木正和 [25%]; 田崎浩二 [25%]; 中島隆志 [25%] | 14h | 14h | 160,000 | 160,000 | 160,000 |  |
| 144 | 8.3.1.8 | 状況レビュー会議 8 |  | 1d | 2015-05-25 A | 2015-05-25 A |  | 100% |  | 2009-05-25 | 2009-05-25 | 1d |  | start no earlier than 2009-05-25 | 荒川純一 [25%]; 岡崎聡子 [25%]; 工藤伸明 [25%]; 根本庸子 [25%]; 高木正和 [25%]; 田崎浩二 [25%]; 中島隆志 [25%] | 14h | 14h | 160,000 | 160,000 | 160,000 |  |
| 145 | 8.3.1.9 | 状況レビュー会議 9 |  | 1d | 2015-06-01 A | 2015-06-01 A |  | 100% |  | 2009-06-01 | 2009-06-01 | 1d |  | start no earlier than 2009-06-01 | 荒川純一 [25%]; 岡崎聡子 [25%]; 工藤伸明 [25%]; 根本庸子 [25%]; 高木正和 [25%]; 田崎浩二 [25%]; 中島隆志 [25%] | 14h | 14h | 160,000 | 160,000 | 160,000 |  |
| 146 | 8.3.1.10 | 状況レビュー会議 10 |  | 1d | 2015-06-08 A | 2015-06-08 A |  | 100% |  | 2009-06-08 | 2009-06-08 | 1d |  | start no earlier than 2009-06-08 | 荒川純一 [25%]; 岡崎聡子 [25%]; 工藤伸明 [25%]; 根本庸子 [25%]; 高木正和 [25%]; 田崎浩二 [25%]; 中島隆志 [25%] | 14h | 14h | 160,000 | 160,000 | 160,000 |  |
| 147 | 8.3.1.11 | 状況レビュー会議 11 |  | 1d | 2015-06-15 A | 2015-06-15 A |  | 100% |  | 2009-06-15 | 2009-06-15 | 1d |  | start no earlier than 2009-06-15 | 荒川純一 [25%]; 岡崎聡子 [25%]; 工藤伸明 [25%]; 根本庸子 [25%]; 高木正和 [25%]; 田崎浩二 [25%]; 中島隆志 [25%] | 14h | 14h | 160,000 | 160,000 | 160,000 |  |
| 148 | 8.3.1.12 | 状況レビュー会議 12 |  | 1d | 2015-06-22 A | 2015-06-22 A |  | 100% |  | 2009-06-22 | 2009-06-22 | 1d |  | start no earlier than 2009-06-22 | 荒川純一 [25%]; 岡崎聡子 [25%]; 工藤伸明 [25%]; 根本庸子 [25%]; 高木正和 [25%]; 田崎浩二 [25%]; 中島隆志 [25%] | 14h | 14h | 160,000 | 160,000 | 160,000 |  |
| 149 | 8.3.1.13 | 状況レビュー会議 13 |  | 1d | 2015-06-29 A | 2015-06-29 A |  | 100% |  | 2009-06-29 | 2009-06-29 | 1d |  | start no earlier than 2009-06-29 | 荒川純一 [25%]; 岡崎聡子 [25%]; 工藤伸明 [25%]; 根本庸子 [25%]; 高木正和 [25%]; 田崎浩二 [25%]; 中島隆志 [25%] | 14h | 14h | 160,000 | 160,000 | 160,000 |  |
| 150 | 8.3.1.14 | 状況レビュー会議 14 |  | 1d | 2015-07-06 A | 2015-07-06 A |  | 100% |  | 2009-07-06 | 2009-07-06 | 1d |  | start no earlier than 2009-07-06 | 荒川純一 [25%]; 岡崎聡子 [25%]; 工藤伸明 [25%]; 根本庸子 [25%]; 高木正和 [25%]; 田崎浩二 [25%]; 中島隆志 [25%] | 14h | 14h | 160,000 | 160,000 | 160,000 |  |
| 151 | 8.3.1.15 | 状況レビュー会議 15 |  | 1d | 2015-07-13 A | 2015-07-13 A |  | 100% |  | 2009-07-13 | 2009-07-13 | 1d |  | start no earlier than 2009-07-13 | 荒川純一 [25%]; 岡崎聡子 [25%]; 工藤伸明 [25%]; 根本庸子 [25%]; 高木正和 [25%]; 田崎浩二 [25%]; 中島隆志 [25%] | 14h | 14h | 160,000 | 160,000 | 160,000 |  |
| 152 | 8.3.1.16 | 状況レビュー会議 16 |  | 1d | 2015-07-21 A | 2015-07-21 A |  | 100% |  | 2009-07-21 | 2009-07-21 | 1d |  | start no earlier than 2009-07-20 | 荒川純一 [25%]; 岡崎聡子 [25%]; 工藤伸明 [25%]; 根本庸子 [25%]; 高木正和 [25%]; 田崎浩二 [25%]; 中島隆志 [25%] | 14h | 14h | 160,000 | 160,000 | 160,000 |  |
| 153 | 8.3.1.17 | 状況レビュー会議 17 |  | 1d | 2015-07-27 | 2015-07-27 |  |  |  | 2009-07-27 | 2009-07-27 | 1d | 185d | start no earlier than 2015-07-27 | 荒川純一 [25%]; 岡崎聡子 [25%]; 工藤伸明 [25%]; 根本庸子 [25%]; 高木正和 [25%]; 田崎浩二 [25%]; 中島隆志 [25%] | 14h |  | 160,000 | 160,000 |  |  |
| 154 | 8.3.1.18 | 状況レビュー会議 18 |  | 1d | 2015-08-03 | 2015-08-03 |  |  |  | 2009-08-03 | 2009-08-03 | 1d | 180d | start no earlier than 2015-08-03 | 荒川純一 [25%]; 岡崎聡子 [25%]; 工藤伸明 [25%]; 根本庸子 [25%]; 高木正和 [25%]; 田崎浩二 [25%]; 中島隆志 [25%] | 14h |  | 160,000 | 160,000 |  |  |
| 155 | 8.3.1.19 | 状況レビュー会議 19 |  | 1d | 2015-08-10 | 2015-08-10 |  |  |  | 2009-08-10 | 2009-08-10 | 1d | 175d | start no earlier than 2015-08-10 | 荒川純一 [25%]; 岡崎聡子 [25%]; 工藤伸明 [25%]; 根本庸子 [25%]; 高木正和 [25%]; 田崎浩二 [25%]; 中島隆志 [25%] | 14h |  | 160,000 | 160,000 |  |  |
| 156 | 8.3.1.20 | 状況レビュー会議 20 |  | 1d | 2015-08-17 | 2015-08-17 |  |  |  | 2009-08-17 | 2009-08-17 | 1d | 170d | start no earlier than 2015-08-17 | 荒川純一 [25%]; 岡崎聡子 [25%]; 工藤伸明 [25%]; 根本庸子 [25%]; 高木正和 [25%]; 田崎浩二 [25%]; 中島隆志 [25%] | 14h |  | 160,000 | 160,000 |  |  |
| 157 | 8.3.1.21 | 状況レビュー会議 21 |  | 1d | 2015-08-24 | 2015-08-24 |  |  |  | 2009-08-24 | 2009-08-24 | 1d | 165d | start no earlier than 2015-08-24 | 荒川純一 [25%]; 岡崎聡子 [25%]; 工藤伸明 [25%]; 根本庸子 [25%]; 高木正和 [25%]; 田崎浩二 [25%]; 中島隆志 [25%] | 14h |  | 160,000 | 160,000 |  |  |
| 158 | 8.3.1.22 | 状況レビュー会議 22 |  | 1d | 2015-08-31 | 2015-08-31 |  |  |  | 2009-08-31 | 2009-08-31 | 1d | 160d | start no earlier than 2015-08-31 | 荒川純一 [25%]; 岡崎聡子 [25%]; 工藤伸明 [25%]; 根本庸子 [25%]; 高木正和 [25%]; 田崎浩二 [25%]; 中島隆志 [25%] | 14h |  | 160,000 | 160,000 |  |  |
| 159 | 8.3.1.23 | 状況レビュー会議 23 |  | 1d | 2015-09-07 | 2015-09-07 |  |  |  | 2009-09-07 | 2009-09-07 | 1d | 155d | start no earlier than 2015-09-07 | 荒川純一 [25%]; 岡崎聡子 [25%]; 工藤伸明 [25%]; 根本庸子 [25%]; 高木正和 [25%]; 田崎浩二 [25%]; 中島隆志 [25%] | 14h |  | 160,000 | 160,000 |  |  |
| 160 | 8.3.1.24 | 状況レビュー会議 24 |  | 1d | 2015-09-14 | 2015-09-14 |  |  |  | 2009-09-14 | 2009-09-14 | 1d | 150d | start no earlier than 2015-09-14 | 荒川純一 [25%]; 岡崎聡子 [25%]; 工藤伸明 [25%]; 根本庸子 [25%]; 高木正和 [25%]; 田崎浩二 [25%]; 中島隆志 [25%] | 14h |  | 160,000 | 160,000 |  |  |
| 161 | 8.3.1.25 | 状況レビュー会議 25 |  | 1d | 2015-09-21 | 2015-09-21 |  |  |  | 2009-09-21 | 2009-09-21 | 1d | 146d | start no earlier than 2015-09-21 | 荒川純一 [25%]; 岡崎聡子 [25%]; 工藤伸明 [25%]; 根本庸子 [25%]; 高木正和 [25%]; 田崎浩二 [25%]; 中島隆志 [25%] | 14h |  | 160,000 | 160,000 |  |  |
| 162 | 8.3.1.26 | 状況レビュー会議 26 |  | 1d | 2015-09-28 | 2015-09-28 |  |  |  | 2009-09-28 | 2009-09-28 | 1d | 142d | start no earlier than 2015-09-28 | 荒川純一 [25%]; 岡崎聡子 [25%]; 工藤伸明 [25%]; 根本庸子 [25%]; 高木正和 [25%]; 田崎浩二 [25%]; 中島隆志 [25%] | 14h |  | 160,000 | 160,000 |  |  |
| 163 | 8.3.1.27 | 状況レビュー会議 27 |  | 1d | 2015-10-05 | 2015-10-05 |  |  |  | 2009-10-05 | 2009-10-05 | 1d | 137d | start no earlier than 2015-10-05 | 荒川純一 [25%]; 岡崎聡子 [25%]; 工藤伸明 [25%]; 根本庸子 [25%]; 高木正和 [25%]; 田崎浩二 [25%]; 中島隆志 [25%] | 14h |  | 160,000 | 160,000 |  |  |
| 164 | 8.3.1.28 | 状況レビュー会議 28 |  | 1d | 2015-10-13 | 2015-10-13 |  |  |  | 2009-10-13 | 2009-10-13 | 1d | 132d | start no earlier than 2015-10-13 | 荒川純一 [25%]; 岡崎聡子 [25%]; 工藤伸明 [25%]; 根本庸子 [25%]; 高木正和 [25%]; 田崎浩二 [25%]; 中島隆志 [25%] | 14h |  | 160,000 | 160,000 |  |  |
| 165 | 8.3.1.29 | 状況レビュー会議 29 |  | 1d | 2015-10-19 | 2015-10-19 |  |  |  | 2009-10-19 | 2009-10-19 | 1d | 128d | start no earlier than 2015-10-19 | 荒川純一 [25%]; 岡崎聡子 [25%]; 工藤伸明 [25%]; 根本庸子 [25%]; 高木正和 [25%]; 田崎浩二 [25%]; 中島隆志 [25%] | 14h |  | 160,000 | 160,000 |  |  |
| 166 | 8.3.1.30 | 状況レビュー会議 30 |  | 1d | 2015-10-26 | 2015-10-26 |  |  |  | 2009-10-26 | 2009-10-26 | 1d | 123d | start no earlier than 2015-10-26 | 荒川純一 [25%]; 岡崎聡子 [25%]; 工藤伸明 [25%]; 根本庸子 [25%]; 高木正和 [25%]; 田崎浩二 [25%]; 中島隆志 [25%] | 14h |  | 160,000 | 160,000 |  |  |
| 167 | 8.3.1.31 | 状況レビュー会議 31 |  | 1d | 2015-11-02 | 2015-11-02 |  |  |  | 2009-11-02 | 2009-11-02 | 1d | 118d | start no earlier than 2015-11-02 | 荒川純一 [25%]; 岡崎聡子 [25%]; 工藤伸明 [25%]; 根本庸子 [25%]; 高木正和 [25%]; 田崎浩二 [25%]; 中島隆志 [25%] | 14h |  | 160,000 | 160,000 |  |  |
| 168 | 8.3.1.32 | 状況レビュー会議 32 |  | 1d | 2015-11-09 | 2015-11-09 |  |  |  | 2009-11-09 | 2009-11-09 | 1d | 114d | start no earlier than 2015-11-09 | 荒川純一 [25%]; 岡崎聡子 [25%]; 工藤伸明 [25%]; 根本庸子 [25%]; 高木正和 [25%]; 田崎浩二 [25%]; 中島隆志 [25%] | 14h |  | 160,000 | 160,000 |  |  |
| 169 | 8.3.1.33 | 状況レビュー会議 33 |  | 1d | 2015-11-16 | 2015-11-16 |  |  |  | 2009-11-16 | 2009-11-16 | 1d | 109d | start no earlier than 2015-11-16 | 荒川純一 [25%]; 岡崎聡子 [25%]; 工藤伸明 [25%]; 根本庸子 [25%]; 高木正和 [25%]; 田崎浩二 [25%]; 中島隆志 [25%] | 14h |  | 160,000 | 160,000 |  |  |
| 170 | 8.3.1.34 | 状況レビュー会議 34 |  | 1d | 2015-11-24 | 2015-11-24 |  |  |  | 2009-11-24 | 2009-11-24 | 1d | 104d | start no earlier than 2015-11-24 | 荒川純一 [25%]; 岡崎聡子 [25%]; 工藤伸明 [25%]; 根本庸子 [25%]; 高木正和 [25%]; 田崎浩二 [25%]; 中島隆志 [25%] | 14h |  | 160,000 | 160,000 |  |  |
| 171 | 8.3.1.35 | 状況レビュー会議 35 |  | 1d | 2015-11-30 | 2015-11-30 |  |  |  | 2009-11-30 | 2009-11-30 | 1d | 100d | start no earlier than 2015-11-30 | 荒川純一 [25%]; 岡崎聡子 [25%]; 工藤伸明 [25%]; 根本庸子 [25%]; 高木正和 [25%]; 田崎浩二 [25%]; 中島隆志 [25%] | 14h |  | 160,000 | 160,000 |  |  |
| 172 | 8.3.1.36 | 状況レビュー会議 36 |  | 1d | 2015-12-07 | 2015-12-07 |  |  |  | 2009-12-07 | 2009-12-07 | 1d | 95d | start no earlier than 2015-12-07 | 荒川純一 [25%]; 岡崎聡子 [25%]; 工藤伸明 [25%]; 根本庸子 [25%]; 高木正和 [25%]; 田崎浩二 [25%]; 中島隆志 [25%] | 14h |  | 160,000 | 160,000 |  |  |
| 173 | 8.3.1.37 | 状況レビュー会議 37 |  | 1d | 2015-12-14 | 2015-12-14 |  |  |  | 2009-12-14 | 2009-12-14 | 1d | 90d | start no earlier than 2015-12-14 | 荒川純一 [25%]; 岡崎聡子 [25%]; 工藤伸明 [25%]; 根本庸子 [25%]; 高木正和 [25%]; 田崎浩二 [25%]; 中島隆志 [25%] | 14h |  | 160,000 | 160,000 |  |  |
| 174 | 8.3.1.38 | 状況レビュー会議 38 |  | 1d | 2015-12-21 | 2015-12-21 |  |  |  | 2009-12-21 | 2009-12-21 | 1d | 85d | start no earlier than 2015-12-21 | 荒川純一 [25%]; 岡崎聡子 [25%]; 工藤伸明 [25%]; 根本庸子 [25%]; 高木正和 [25%]; 田崎浩二 [25%]; 中島隆志 [25%] | 14h |  | 160,000 | 160,000 |  |  |
| 175 | 8.3.1.39 | 状況レビュー会議 39 |  | 1d | 2015-12-28 | 2015-12-28 |  |  |  | 2009-12-28 | 2009-12-28 | 1d | 81d | start no earlier than 2015-12-28 | 荒川純一 [25%]; 岡崎聡子 [25%]; 工藤伸明 [25%]; 根本庸子 [25%]; 高木正和 [25%]; 田崎浩二 [25%]; 中島隆志 [25%] | 14h |  | 160,000 | 160,000 |  |  |
| 176 | 8.3.1.40 | 状況レビュー会議 40 |  | 1d | 2016-01-04 | 2016-01-04 |  |  |  | 2010-01-04 | 2010-01-04 | 1d | 77d | start no earlier than 2016-01-04 | 荒川純一 [25%]; 岡崎聡子 [25%]; 工藤伸明 [25%]; 根本庸子 [25%]; 高木正和 [25%]; 田崎浩二 [25%]; 中島隆志 [25%] | 14h |  | 160,000 | 160,000 |  |  |
| 177 | 8.3.1.41 | 状況レビュー会議 41 | manual | 1d | 2016-01-12 | 2016-01-12 |  |  |  | 2010-01-12 | 2010-01-12 | 1d |  | start no earlier than 2016-01-12 | 荒川純一 [25%]; 岡崎聡子 [25%]; 工藤伸明 [25%]; 根本庸子 [25%]; 高木正和 [25%]; 田崎浩二 [25%]; 中島隆志 [25%] | 14h |  | 160,000 | 160,000 |  |  |
| 178 | 8.3.1.42 | 状況レビュー会議 42 |  | 1d | 2016-01-18 | 2016-01-18 |  |  |  | 2010-01-18 | 2010-01-18 | 1d | 68d | start no earlier than 2016-01-18 | 荒川純一 [25%]; 岡崎聡子 [25%]; 工藤伸明 [25%]; 根本庸子 [25%]; 高木正和 [25%]; 田崎浩二 [25%]; 中島隆志 [25%] | 14h |  | 160,000 | 160,000 |  |  |
| 179 | 8.3.1.43 | 状況レビュー会議 43 |  | 1d | 2016-01-25 | 2016-01-25 |  |  |  | 2010-01-25 | 2010-01-25 | 1d | 63d | start no earlier than 2016-01-25 | 荒川純一 [25%]; 岡崎聡子 [25%]; 工藤伸明 [25%]; 根本庸子 [25%]; 高木正和 [25%]; 田崎浩二 [25%]; 中島隆志 [25%] | 14h |  | 160,000 | 160,000 |  |  |
| 180 | 8.3.1.44 | 状況レビュー会議 44 |  | 1d | 2016-02-01 | 2016-02-01 |  |  |  | 2010-02-01 | 2010-02-01 | 1d | 58d | start no earlier than 2016-02-01 | 荒川純一 [25%]; 岡崎聡子 [25%]; 工藤伸明 [25%]; 根本庸子 [25%]; 高木正和 [25%]; 田崎浩二 [25%]; 中島隆志 [25%] | 14h |  | 160,000 | 160,000 |  |  |
| 181 | 8.3.1.45 | 状況レビュー会議 45 |  | 1d | 2016-02-08 | 2016-02-08 |  |  |  | 2010-02-08 | 2010-02-08 | 1d | 53d | start no earlier than 2016-02-08 | 荒川純一 [25%]; 岡崎聡子 [25%]; 工藤伸明 [25%]; 根本庸子 [25%]; 高木正和 [25%]; 田崎浩二 [25%]; 中島隆志 [25%] | 14h |  | 160,000 | 160,000 |  |  |
| 182 | 8.3.1.46 | 状況レビュー会議 46 |  | 1d | 2016-02-15 | 2016-02-15 |  |  |  | 2010-02-15 | 2010-02-15 | 1d | 49d | start no earlier than 2016-02-15 | 荒川純一 [25%]; 岡崎聡子 [25%]; 工藤伸明 [25%]; 根本庸子 [25%]; 高木正和 [25%]; 田崎浩二 [25%]; 中島隆志 [25%] | 14h |  | 160,000 | 160,000 |  |  |
| 183 | 8.3.1.47 | 状況レビュー会議 47 |  | 1d | 2016-02-22 | 2016-02-22 |  |  |  | 2010-02-22 | 2010-02-22 | 1d | 44d | start no earlier than 2016-02-22 | 荒川純一 [25%]; 岡崎聡子 [25%]; 工藤伸明 [25%]; 根本庸子 [25%]; 高木正和 [25%]; 田崎浩二 [25%]; 中島隆志 [25%] | 14h |  | 160,000 | 160,000 |  |  |
| 184 | 8.3.1.48 | 状況レビュー会議 48 |  | 1d | 2016-03-01 | 2016-03-01 |  |  |  | 2010-03-01 | 2010-03-01 | 1d | 38d | start no earlier than 2016-03-01 | 荒川純一 [25%]; 岡崎聡子 [25%]; 工藤伸明 [25%]; 根本庸子 [25%]; 高木正和 [25%]; 田崎浩二 [25%]; 中島隆志 [25%] | 14h |  | 160,000 | 160,000 |  |  |
| 185 | 8.3.1.49 | 状況レビュー会議 49 |  | 1d | 2016-03-08 | 2016-03-08 |  |  |  | 2010-03-08 | 2010-03-08 | 1d | 33d | start no earlier than 2016-03-08 | 荒川純一 [25%]; 岡崎聡子 [25%]; 工藤伸明 [25%]; 根本庸子 [25%]; 高木正和 [25%]; 田崎浩二 [25%]; 中島隆志 [25%] | 14h |  | 160,000 | 160,000 |  |  |
| 186 | 8.3.1.50 | 状況レビュー会議 50 |  | 1d | 2016-03-15 | 2016-03-15 |  |  |  | 2010-03-15 | 2010-03-15 | 1d | 28d | start no earlier than 2016-03-15 | 荒川純一 [25%]; 岡崎聡子 [25%]; 工藤伸明 [25%]; 根本庸子 [25%]; 高木正和 [25%]; 田崎浩二 [25%]; 中島隆志 [25%] | 14h |  | 160,000 | 160,000 |  |  |
| 187 | 8.3.1.51 | 状況レビュー会議 51 |  | 1d | 2016-03-23 | 2016-03-23 |  |  |  | 2010-03-23 | 2010-03-23 | 1d | 23d | start no earlier than 2016-03-23 | 荒川純一 [25%]; 岡崎聡子 [25%]; 工藤伸明 [25%]; 根本庸子 [25%]; 高木正和 [25%]; 田崎浩二 [25%]; 中島隆志 [25%] | 14h |  | 160,000 | 160,000 |  |  |
| 188 | 8.3.1.52 | 状況レビュー会議 52 |  | 1d | 2016-03-29 | 2016-03-29 |  |  |  | 2010-03-29 | 2010-03-29 | 1d | 19d | start no earlier than 2016-03-29 | 荒川純一 [25%]; 岡崎聡子 [25%]; 工藤伸明 [25%]; 根本庸子 [25%]; 高木正和 [25%]; 田崎浩二 [25%]; 中島隆志 [25%] | 14h |  | 160,000 | 160,000 |  |  |

Notes:
- 132: 以下のチェックリストを使ってリスクを洗い出す。 / 重要なリスクについては、詳細な対応計画を以下のシートに別途入力する。

| ID | WBS | Task | Duration | Start | Finish | Complete | Remaining | Baseline start | Baseline finish | Baseline duration | Total slack | Constraint | Resources | Work | Actual work | Cost | Baseline cost | Actual cost | 成果物 |
| --- | --- | --- | --- | --- | --- | --- | --- | --- | --- | --- | --- | --- | --- | --- | --- | --- | --- | --- | --- |
| 189 | 8.3.2 | **全体運営会議** | 228d | 2015-04-06 A | 2016-03-07 | 33% | 152d | 2009-04-06 | 2010-03-05 | 227d | 34d |  |  | 48h | 16h | 600,000 | 600,000 | 200,000 | 議事録 |
| 190 | 8.3.2.1 | 全体運営会議 1 | 1d | 2015-04-06 A | 2015-04-06 A | 100% |  | 2009-04-06 | 2009-04-06 | 1d |  | start no earlier than 2009-04-05 | 荒川純一 [12.5%]; 工藤伸明 [12.5%]; 高木正和 [12.5%]; 吉田正雄 [12.5%] | 4h | 4h | 50,000 | 50,000 | 50,000 |  |
| 191 | 8.3.2.2 | 全体運営会議 2 | 1d | 2015-05-06 A | 2015-05-06 A | 100% |  | 2009-05-06 | 2009-05-06 | 1d |  | start no earlier than 2009-05-05 | 荒川純一 [12.5%]; 工藤伸明 [12.5%]; 高木正和 [12.5%]; 吉田正雄 [12.5%] | 4h | 4h | 50,000 | 50,000 | 50,000 |  |
| 192 | 8.3.2.3 | 全体運営会議 3 | 1d | 2015-06-05 A | 2015-06-05 A | 100% |  | 2009-06-05 | 2009-06-05 | 1d |  | start no earlier than 2009-06-05 | 荒川純一 [12.5%]; 工藤伸明 [12.5%]; 高木正和 [12.5%]; 吉田正雄 [12.5%] | 4h | 4h | 50,000 | 50,000 | 50,000 |  |
| 193 | 8.3.2.4 | 全体運営会議 4 | 1d | 2015-07-06 A | 2015-07-06 A | 100% |  | 2009-07-06 | 2009-07-06 | 1d |  | start no earlier than 2009-07-05 | 荒川純一 [12.5%]; 工藤伸明 [12.5%]; 高木正和 [12.5%]; 吉田正雄 [12.5%] | 4h | 4h | 50,000 | 50,000 | 50,000 |  |
| 194 | 8.3.2.5 | 全体運営会議 5 | 1d | 2015-08-05 | 2015-08-05 |  |  | 2009-08-05 | 2009-08-05 | 1d | 178d | start no earlier than 2015-08-05 | 荒川純一 [12.5%]; 工藤伸明 [12.5%]; 高木正和 [12.5%]; 吉田正雄 [12.5%] | 4h |  | 50,000 | 50,000 |  |  |
| 195 | 8.3.2.6 | 全体運営会議 6 | 1d | 2015-09-07 | 2015-09-07 |  |  | 2009-09-07 | 2009-09-07 | 1d | 155d | start no earlier than 2015-09-07 | 荒川純一 [12.5%]; 工藤伸明 [12.5%]; 高木正和 [12.5%]; 吉田正雄 [12.5%] | 4h |  | 50,000 | 50,000 |  |  |
| 196 | 8.3.2.7 | 全体運営会議 7 | 1d | 2015-10-05 | 2015-10-05 |  |  | 2009-10-05 | 2009-10-05 | 1d | 137d | start no earlier than 2015-10-05 | 荒川純一 [12.5%]; 工藤伸明 [12.5%]; 高木正和 [12.5%]; 吉田正雄 [12.5%] | 4h |  | 50,000 | 50,000 |  |  |
| 197 | 8.3.2.8 | 全体運営会議 8 | 1d | 2015-11-05 | 2015-11-05 |  |  | 2009-11-05 | 2009-11-05 | 1d | 116d | start no earlier than 2015-11-05 | 荒川純一 [12.5%]; 工藤伸明 [12.5%]; 高木正和 [12.5%]; 吉田正雄 [12.5%] | 4h |  | 50,000 | 50,000 |  |  |
| 198 | 8.3.2.9 | 全体運営会議 9 | 1d | 2015-12-07 | 2015-12-07 |  |  | 2009-12-07 | 2009-12-07 | 1d | 95d | start no earlier than 2015-12-07 | 荒川純一 [12.5%]; 工藤伸明 [12.5%]; 高木正和 [12.5%]; 吉田正雄 [12.5%] | 4h |  | 50,000 | 50,000 |  |  |
| 199 | 8.3.2.10 | 全体運営会議 10 | 1d | 2016-01-05 | 2016-01-05 |  |  | 2010-01-05 | 2010-01-05 | 1d | 76d | start no earlier than 2016-01-05 | 荒川純一 [12.5%]; 工藤伸明 [12.5%]; 高木正和 [12.5%]; 吉田正雄 [12.5%] | 4h |  | 50,000 | 50,000 |  |  |
| 200 | 8.3.2.11 | 全体運営会議 11 | 1d | 2016-02-05 | 2016-02-05 |  |  | 2010-02-05 | 2010-02-05 | 1d | 54d | start no earlier than 2016-02-05 | 荒川純一 [12.5%]; 工藤伸明 [12.5%]; 高木正和 [12.5%]; 吉田正雄 [12.5%] | 4h |  | 50,000 | 50,000 |  |  |
| 201 | 8.3.2.12 | 全体運営会議 12 | 1d | 2016-03-07 | 2016-03-07 |  |  | 2010-03-05 | 2010-03-05 | 1d | 34d | start no earlier than 2016-03-07 | 荒川純一 [12.5%]; 工藤伸明 [12.5%]; 高木正和 [12.5%]; 吉田正雄 [12.5%] | 4h |  | 50,000 | 50,000 |  |  |
| 202 | 8.3.3 | **作業パフォーマンス報告書の作成** | 227d | 2015-04-01 A | 2016-03-01 | 33% | 151.33d | 2009-04-01 | 2010-03-01 | 226d | 38d |  |  | 12h | 4h | 180,000 | 180,000 | 60,000 | 実績報告書 |
| 203 | 8.3.3.1 | 作業パフォーマンス報告書の作成 1 | 1d | 2015-04-01 A | 2015-04-01 A | 100% |  | 2009-04-01 | 2009-04-01 | 1d |  | start no earlier than 2009-04-01 | 荒川純一 [12.5%] | 1h | 1h | 15,000 | 15,000 | 15,000 |  |
| 204 | 8.3.3.2 | 作業パフォーマンス報告書の作成 2 | 1d | 2015-05-01 A | 2015-05-01 A | 100% |  | 2009-05-01 | 2009-05-01 | 1d |  | start no earlier than 2009-05-01 | 荒川純一 [12.5%] | 1h | 1h | 15,000 | 15,000 | 15,000 |  |
| 205 | 8.3.3.3 | 作業パフォーマンス報告書の作成 3 | 1d | 2015-06-01 A | 2015-06-01 A | 100% |  | 2009-06-01 | 2009-06-01 | 1d |  | start no earlier than 2009-06-01 | 荒川純一 [12.5%] | 1h | 1h | 15,000 | 15,000 | 15,000 |  |
| 206 | 8.3.3.4 | 作業パフォーマンス報告書の作成 4 | 1d | 2015-07-01 A | 2015-07-01 A | 100% |  | 2009-07-01 | 2009-07-01 | 1d |  | start no earlier than 2009-07-01 | 荒川純一 [12.5%] | 1h | 1h | 15,000 | 15,000 | 15,000 |  |
| 207 | 8.3.3.5 | 作業パフォーマンス報告書の作成 5 | 1d | 2015-08-03 | 2015-08-03 |  |  | 2009-08-03 | 2009-08-03 | 1d | 180d | start no earlier than 2015-08-03 | 荒川純一 [12.5%] | 1h |  | 15,000 | 15,000 |  |  |
| 208 | 8.3.3.6 | 作業パフォーマンス報告書の作成 6 | 1d | 2015-09-01 | 2015-09-01 |  |  | 2009-09-01 | 2009-09-01 | 1d | 159d | start no earlier than 2015-09-01 | 荒川純一 [12.5%] | 1h |  | 15,000 | 15,000 |  |  |
| 209 | 8.3.3.7 | 作業パフォーマンス報告書の作成 7 | 1d | 2015-10-01 | 2015-10-01 |  |  | 2009-10-01 | 2009-10-01 | 1d | 139d | start no earlier than 2015-10-01 | 荒川純一 [12.5%] | 1h |  | 15,000 | 15,000 |  |  |
| 210 | 8.3.3.8 | 作業パフォーマンス報告書の作成 8 | 1d | 2015-11-02 | 2015-11-02 |  |  | 2009-11-02 | 2009-11-02 | 1d | 118d | start no earlier than 2015-11-02 | 荒川純一 [12.5%] | 1h |  | 15,000 | 15,000 |  |  |
| 211 | 8.3.3.9 | 作業パフォーマンス報告書の作成 9 | 1d | 2015-12-01 | 2015-12-01 |  |  | 2009-12-01 | 2009-12-01 | 1d | 99d | start no earlier than 2015-12-01 | 荒川純一 [12.5%] | 1h |  | 15,000 | 15,000 |  |  |
| 212 | 8.3.3.10 | 作業パフォーマンス報告書の作成 10 | 1d | 2016-01-04 | 2016-01-04 |  |  | 2010-01-04 | 2010-01-04 | 1d | 77d | start no earlier than 2016-01-04 | 荒川純一 [12.5%] | 1h |  | 15,000 | 15,000 |  |  |
| 213 | 8.3.3.11 | 作業パフォーマンス報告書の作成 11 | 1d | 2016-02-01 | 2016-02-01 |  |  | 2010-02-01 | 2010-02-01 | 1d | 58d | start no earlier than 2016-02-01 | 荒川純一 [12.5%] | 1h |  | 15,000 | 15,000 |  |  |
| 214 | 8.3.3.12 | 作業パフォーマンス報告書の作成 12 | 1d | 2016-03-01 | 2016-03-01 |  |  | 2010-03-01 | 2010-03-01 | 1d | 38d | start no earlier than 2016-03-01 | 荒川純一 [12.5%] | 1h |  | 15,000 | 15,000 |  |  |

| ID | WBS | Task | Type | Duration | Start | Finish | Predecessors | Baseline start | Baseline finish | Baseline duration | Total slack | Free slack | Resources | Work | Cost | Baseline cost | 成果物 |
| --- | --- | --- | --- | --- | --- | --- | --- | --- | --- | --- | --- | --- | --- | --- | --- | --- | --- |
| 215 | 8.4 | **終結** |  | 6d | 2016-04-18 | 2016-04-25 |  | 2010-04-06 | 2010-04-13 | 6d | 0d |  |  | 124h | 1,540,000 | 1,660,000 |  |
| 216 | 8.4.1 | **契約終了** |  | 4d | 2016-04-18 | 2016-04-21 |  | 2010-04-06 | 2010-04-09 | 4d | 0d |  |  | 16h | 240,000 | 240,000 |  |
| 217 | 8.4.1.1 | 契約終了手順を明確にする |  | 1d | 2016-04-18 | 2016-04-18 | 99 | 2010-04-06 | 2010-04-06 | 1d | 0d |  | 荒川純一 [50%] | 4h | 60,000 | 60,000 | 契約終了手順書 |
| 218 | 8.4.1.2 | 契約終了手順を実行する |  | 3d | 2016-04-19 | 2016-04-21 | 217 | 2010-04-07 | 2010-04-09 | 3d | 0d |  | 荒川純一 [50%] | 12h | 180,000 | 180,000 | 契約終了手順実行報告書 |
| 219 | 8.4.2 | **事務終了** |  | 3d | 2016-04-18 | 2016-04-20 |  | 2010-04-06 | 2010-04-08 | 3d | 1d |  |  | 12h | 180,000 | 180,000 |  |
| 220 | 8.4.2.1 | 事務終了手順を明確にする |  | 1d | 2016-04-18 | 2016-04-18 | 99 | 2010-04-06 | 2010-04-06 | 1d | 1d | 0d | 荒川純一 [50%] | 4h | 60,000 | 60,000 | 事務終了手順書 |
| 221 | 8.4.2.2 | 事務終了手順を実行する |  | 2d | 2016-04-19 | 2016-04-20 | 220 | 2010-04-07 | 2010-04-08 | 2d | 1d |  | 荒川純一 [50%] | 8h | 120,000 | 120,000 | 事務終了手順実行報告書 |
| 222 | 8.4.3 | **組織のプロセス資産（更新版）** |  | 2d | 2016-04-22 | 2016-04-25 |  | 2010-04-12 | 2010-04-13 | 2d | 0d |  |  | 96h | 1,120,000 | 1,240,000 |  |
| 223 | 8.4.3.1 | プロジェクトの計画対実績のレビューをする |  | 1d | 2016-04-22 | 2016-04-22 | 218, 221 | 2010-04-12 | 2010-04-12 | 1d | 0d |  | 荒川純一; 岡崎聡子; 工藤伸明; 高木正和; 根本庸子; 田崎浩二; 中島隆志; 矢島謙一; 長瀬治夫; 目黒完治; 中尾美恵子 | 88h | 1,000,000 | 1,120,000 | プロジェクトの計画対実績レビュー報告書 |
| 224 | 8.4.3.2 | 教訓をまとめる |  | 1d | 2016-04-25 | 2016-04-25 | 223 | 2010-04-13 | 2010-04-13 | 1d | 0d |  | 荒川純一 | 8h | 120,000 | 120,000 | 教訓 |
| 225 | 8.4.4 | プロジェクト終了 | milestone | 0d | 2016-04-25 | 2016-04-25 | 224 | 2010-04-13 | 2010-04-13 | 0d | 0d |  |  |  |  |  |  |

Notes:
- 224: 以下のチェックリストを使用して教訓を洗い出す。 / 重要な教訓については、以下のシートに詳細に別途入力する。
